# 00000 Client-Project-Schedule

How a schedule from MS Project XML changed from version to version. A marks actual dates.

## Version 1 (data date 2026-06-25, saved 2026-06-25)

| ID | WBS | Task | Duration | Start | Finish | Predecessors | Complete | Total float | Constraint |
| --- | --- | --- | --- | --- | --- | --- | --- | --- | --- |
| 1 | 1 | **P3290 System Health Monitoring** | 80d | 2026-03-25 A | 2026-07-14 |  | 84% | 0d |  |
| 2 | 1.1 | **Project Launch** | 10d | 2026-03-25 A | 2026-04-07 A |  | 100% |  |  |
| 3 |  | Kickoff Meeting MS | 0d | 2026-04-01 A | 2026-04-01 A |  | 100% |  | start no earlier than 2026-04-01 |
| 4 |  | Pfizer Accounts Request MS | 0d | 2026-04-01 A | 2026-04-01 A | 3 | 100% |  |  |
| 5 |  | Pfizer Access Established MS | 0d | 2026-04-07 A | 2026-04-07 A | 4FS+1w | 100% |  |  |
| 6 |  | BOM Ordered MS | 0d | 2026-03-25 A | 2026-03-25 A |  | 100% |  | start no earlier than 2026-03-25 |
| 7 | 1.2 | **Design** | 22d | 2026-04-01 A | 2026-04-30 A |  | 100% |  |  |
| 8 |  | Identify Tag Naming Standards MS | 12d | 2026-04-01 A | 2026-04-16 A | 3 | 100% |  |  |
| 9 |  | Ignition Display Wireframes | 1w | 2026-04-17 A | 2026-04-23 A | 8 | 100% |  |  |
| 10 |  | Wireframes Approval | 1w | 2026-04-24 A | 2026-04-30 A | 9 | 100% |  |  |
| 11 | 1.3 | **Development** | 25d | 2026-05-01 A | 2026-06-04 A |  | 100% |  |  |
| 12 |  | Ignition Display Development | 2w | 2026-05-01 A | 2026-05-14 A | 10 | 100% |  |  |
| 13 |  | Ignition Application Development | 3w | 2026-05-15 A | 2026-06-04 A | 12 | 100% |  |  |
| 14 | 1.4 | **Testing** | 5d | 2026-06-05 A | 2026-06-11 A |  | 100% |  |  |
| 15 |  | Display and Configuration Testing | 1w | 2026-06-05 A | 2026-06-11 A | 13 | 100% |  |  |
| 16 | 1.5 | **System Configuration** | 48d | 2026-04-24 A | 2026-06-30 |  | 83% | 0d |  |
| 17 |  | BOM Arrived MS | 0d | 2026-04-24 A | 2026-04-24 A |  | 100% |  | start no earlier than 2026-04-24 |
| 18 |  | Network Change Requests MS | 0d | 2026-04-24 A | 2026-04-24 A | 17 | 100% |  |  |
| 19 |  | Network Changes Complete MS | 0d | 2026-04-30 A | 2026-04-30 A | 18FS+1w | 100% |  |  |
| 20 |  | KEPServerEX Configuration | 30d | 2026-05-01 A | 2026-06-11 A | 19 | 100% |  |  |
| 21 |  | Ignition Server Rack Install | 2d | 2026-05-01 A | 2026-05-04 A | 19 | 100% |  |  |
| 22 |  | Install Ignition Gateway | 1d | 2026-05-05 A | 2026-05-05 A | 21 | 100% |  |  |
| 23 |  | Ignition Edge Install | 1d | 2026-05-06 A | 2026-05-06 A | 22 | 100% |  |  |
| 24 |  | Ignition Application Install | 1d | 2026-06-12 A | 2026-06-12 A | 15, 23 | 100% |  |  |
| 25 |  | Management Domain Ignition Edge | 1d | 2026-06-11 A | 2026-06-11 A |  | 100% |  |  |
| 26 |  | Application Testing | 10d | 2026-06-15 A | 2026-06-26 | 24 | 40% | 0d | start no earlier than 2026-06-15 |
| 27 |  | Validation Testing | 2d | 2026-06-29 | 2026-06-30 | 26 |  | 0d |  |
| 28 | 1.6 | **Hypercare Support** | 10d | 2026-07-01 | 2026-07-14 |  |  | 0d |  |
| 29 |  | System Support | 2w | 2026-07-01 | 2026-07-14 | 26, 27 |  | 0d |  |

## Version 2 (data date 2026-06-25, saved 2026-06-28)

Note of the change: Add MPP14 writer, task scheduling, duration/work calendar models, and field mapping

Last finish stays 2026-07-14. Complete tasks 19 → 20.

Changed:

| ID | Task | Finish | Complete | Total float |
| --- | --- | --- | --- | --- |
| 1 | **P3290 System Health Monitoring** |  | 84% → 89% |  |
| 16 | **System Configuration** |  | 83% → 96% |  |
| 26 | Application Testing | 2026-06-26 A | 40% → 100% | 0d → none |
